# 37529-IOH

Schedule from ProjectLibre, 2025-11-05 to 2025-12-01.

## Calendars

- Standard: Mon-Sat 08:00-12:00, 13:00-17:00; Sun off. Exceptions (off unless hours are given): 2025-11-29 08:00-12:00, 13:00-17:00.

## Resources

| Resource |
| --- |
| Unassigned |
| CC-B1 |

## Schedule

| ID | WBS | Task | Duration | Start | Finish | Predecessors |
| --- | --- | --- | --- | --- | --- | --- |
| 1 | 1 | **37529-IOH** | 23d | 2025-11-05 | 2025-12-01 |  |
| 2 | 1.1 | **Initial Preparation** | 2d | 2025-11-05 | 2025-11-06 |  |
| 3 | 1.1.1 | Loco washing and Compressor removal | 1d | 2025-11-05 | 2025-11-05 |  |
| 4 | 1.1.2 | Hood removal | 1d | 2025-11-06 | 2025-11-06 | 3 |
| 5 | 1.2 | **Unloading of CC and EC Components** | 4d | 2025-11-06 | 2025-11-10 |  |
| 6 | 1.2.1 | Unloading of Cab and Panel components | 1d | 2025-11-06 | 2025-11-06 | 3 |
| 7 | 1.2.2 | Unloading of VCB and SR/BUR/HF Contactors | 1d | 2025-11-07 | 2025-11-07 | 6 |
| 8 | 1.2.3 | BUR unloading | 1d | 2025-11-08 | 2025-11-08 | 4, 7 |
| 9 | 1.2.4 | HLC unloading | 1d | 2025-11-10 | 2025-11-10 | 4, 8 |
| 10 | 1.3 | **SR unloading** | 3d | 2025-11-06 | 2025-11-08 |  |
| 11 | 1.3.1 | SR Coolant draining and pipeline disconnection | 1d | 2025-11-06 | 2025-11-06 | 3 |
| 12 | 1.3.2 | Transformer Oil draining and pipeline disconnection | 1d | 2025-11-07 | 2025-11-07 | 11 |
| 13 | 1.3.3 | SR unloading - TM and SR sub-d disconnection | 1d | 2025-11-08 | 2025-11-08 | 4, 12 |
| 14 | 1.4 | **CC Schedule & loading** | 8d | 2025-11-12 | 2025-11-20 |  |
| 15 | 1.4.1 | BUR & HLC Sch. BUR Contactor loading | 1d | 2025-11-12 | 2025-11-12 | 9, 23 |
| 16 | 1.4.2 | SR Sch. SR Contactor loading | 1d | 2025-11-13 | 2025-11-13 | 15 |
| 17 | 1.4.3 | BUR & HLC loading | 1d | 2025-11-14 | 2025-11-14 | 16 |
| 18 | 1.4.4 | SR loading. TM/SR Sub-d connections | 1d | 2025-11-17 | 2025-11-17 | 17, 27 |
| 19 | 1.4.5 | Cab/Panel components loading | 1d | 2025-11-18 | 2025-11-18 | 18 |
| 20 | 1.4.6 | Cab, roof, panels sch. | 1d | 2025-11-19 | 2025-11-19 | 19 |
| 21 | 1.4.7 | Couplers checking and software updation | 1d | 2025-11-20 | 2025-11-20 | 20 |
| 22 | 1.5 | **EC overhauling** | 3d | 2025-11-08 | 2025-11-11 |  |
| 23 | 1.5.1 | Overhauling of VCB, Contactors and Relays | 3d | 2025-11-08 | 2025-11-11 | 7 |
| 24 | 1.6 | **Transformer attention** | 6d | 2025-11-10 | 2025-11-15 |  |
| 25 | 1.6.1 | Transformer bushing gasket attention | 3d | 2025-11-10 | 2025-11-12 | 13 |
| 26 | 1.6.2 | Transformer Oil pump changing | 1d | 2025-11-13 | 2025-11-13 | 25 |
| 27 | 1.6.3 | Tranformer Oil filtration and leakage attention | 2d | 2025-11-14 | 2025-11-15 | 26 |

| ID | WBS | Task | Duration | Start | Finish | Predecessors |
| --- | --- | --- | --- | --- | --- | --- |
| 28 | 1.7 | **Transformer Reconnections** | 2d | 2025-11-18 | 2025-11-19 |  |
| 29 | 1.7.1 | Transformer Oil pipeline connections | 1d | 2025-11-18 | 2025-11-18 | 18 |
| 30 | 1.7.2 | Transformer electrical connections | 1d | 2025-11-19 | 2025-11-19 | 29 |
| 31 | 1.8 | **TM Work** | 19d | 2025-11-06 | 2025-11-27 |  |
| 32 | 1.8.1 | TM disconnections | 1d | 2025-11-06 | 2025-11-06 | 3 |
| 33 | 1.8.2 | Car body attention & Bellow changing | 1d | 2025-11-07 | 2025-11-07 | 40 |
| 34 | 1.8.3 | FT TMs overhauling | 6d | 2025-11-07 | 2025-11-13 | 32 |
| 35 | 1.8.4 | RT TMs overhauling | 6d | 2025-11-14 | 2025-11-20 | 34 |
| 36 | 1.8.5 | FT TM sch. post FT assembling | 1d | 2025-11-18 | 2025-11-18 | 45 |
| 37 | 1.8.6 | RT TM sch. post RT assembling | 1d | 2025-11-25 | 2025-11-25 | 50 |
| 38 | 1.8.7 | TM connections post Truck In | 1d | 2025-11-27 | 2025-11-27 | 52 |
| 39 | 1.9 | **UT work** | 19d | 2025-11-06 | 2025-11-27 |  |
| 40 | 1.9.1 | Truck removal & Dummy truck / Trustle placement | 1d | 2025-11-06 | 2025-11-06 | 3 |
| 41 | 1.9.2 | Truck & TM stripping | 2d | 2025-11-07 | 2025-11-08 | 40 |
| 42 | 1.9.3 | **FT work** | 3.5d | 2025-11-14 | 2025-11-18 |  |
| 43 | 1.9.3.1 | FT TMs assembling | 1.5d | 2025-11-14 | 2025-11-15 | 34 |
| 44 | 1.9.3.2 | FT TMs Trial run | 0.5d | 2025-11-15 | 2025-11-15 | 43 |
| 45 | 1.9.3.3 | FT assembling | 1d | 2025-11-17 | 2025-11-17 | 44 |
| 46 | 1.9.3.4 | Brake blocks and dampers fitment | 0.5d | 2025-11-18 | 2025-11-18 | 45 |
| 47 | 1.9.4 | **RT work** | 3.5d | 2025-11-21 | 2025-11-25 |  |
| 48 | 1.9.4.1 | RT TMs assembling | 1.5d | 2025-11-21 | 2025-11-22 | 35 |
| 49 | 1.9.4.2 | RT TMs Trial run | 0.5d | 2025-11-22 | 2025-11-22 | 48 |
| 50 | 1.9.4.3 | RT assembling | 1d | 2025-11-24 | 2025-11-24 | 49 |
| 51 | 1.9.4.4 | Brake blocks and dampers fitment | 0.5d | 2025-11-25 | 2025-11-25 | 50 |
| 52 | 1.9.5 | Truck In Connections | 1d | 2025-11-26 | 2025-11-26 | 36, 37, 46, 51 |
| 53 | 1.9.6 | UT Schedule (Clearance checking) | 1d | 2025-11-27 | 2025-11-27 | 52 |

| ID | WBS | Task | Duration | Start | Finish | Predecessors |
| --- | --- | --- | --- | --- | --- | --- |
| 54 | 1.10 | **Final Testing and Releasing** | 3d | 2025-11-28 | 2025-12-01 |  |
| 55 | 1.10.1 | Energization | 1d | 2025-11-28 | 2025-11-28 | 21, 30, 38, 53 |
| 56 | 1.10.2 | FRC | 1d | 2025-11-29 | 2025-11-29 | 55 |
| 57 | 1.10.3 | Releasing | 1d | 2025-12-01 | 2025-12-01 | 56 |
